Schedule from MS Project, 2023-03-01 to 2023-06-28, costs in ₴.

## Calendars

- Стандартний: Mon-Fri 09:00-13:00, 14:00-18:00; Sat-Sun off.

## Resources

| Resource | Unit | Rate |
| --- | --- | --- |
| Дизайнер |  | 220 |
| Робітник2 |  | 90 |
| Робітник3 |  | 90 |
| Робітник4 |  | 90 |
| Робітник5 |  | 90 |
| Юрист |  | 150 |
| Сантехнік |  | 100 |
| Електрик |  | 120 |
| Інженер |  | 150 |
| Робітник6 |  | 90 |
| Робітник7 |  | 90 |
| Зварщик |  | 120 |
| Ріелтор |  | 180 |
| Інженер2 |  | 150 |
| Бухгалтер |  | 130 |
| робітник8 |  | 90 |
| робітник10 |  | 90 |
| робітник11 |  | 90 |
| робітник12 |  | 90 |
| Робітник13 |  | 90 |
| Робітник14 |  | 90 |
| робітник15 |  | 90 |
| Фундаментні блоки | шт. | 500 |
| Керамічна цегла | шт. | 4 |
| Пінопласт | м2 | 100 |
| Цемент | мішок | 200 |
| Арматура | шт. | 50 |
| Бітумна черепиця | м2 | 50 |
| Вікна ПВХ | шт. | 10000 |
| Двері металеві | шт. | 7500 |
| Двері деревяні | шт. | 5000 |

## Schedule

| ID | WBS | Task | Type | Duration | Start | Finish | Predecessors | Total slack | Free slack | Constraint | Resources | Work | Cost |
| --- | --- | --- | --- | --- | --- | --- | --- | --- | --- | --- | --- | --- | --- |
| 1 | 1 | **Побудова невеликого модульного комплексу** |  | 85d | 2023-03-01 | 2023-06-28 |  | 0d |  |  |  | 2835h | 29,970,840 |
| 2 | 1.1 | Початок проекту | milestone, manual | 0d | 2023-03-01 | 2023-03-01 |  |  |  | as late as possible |  |  |  |
| 3 | 1.2 | **Інвестиційний етап** |  | 10.88d | 2023-03-02 | 2023-03-16 |  | 0d |  |  |  | 112h | 741,760 |
| 4 | 1.2.1 | Аналіз потоку переселенців | manual | 3d | 2023-03-02 | 2023-03-06 |  |  |  |  |  |  | 20,000 |
| 5 | 1.2.2 | Пошук місця для побудови | manual | 5d | 2023-03-06 | 2023-03-13 | 4 |  |  |  | Ріелтор | 40h | 22,200 |
| 6 | 1.2.3 | Розробка дизайну | manual | 7d | 2023-03-06 | 2023-03-15 | 4 |  |  |  | Дизайнер | 56h | 47,320 |
| 7 | 1.2.4 | Затвердження дизайну | milestone, manual | 0d | 2023-03-15 | 2023-03-15 | 6, 5 |  |  |  | Дизайнер; Інженер; Інженер2 |  |  |
| 8 | 1.2.5 | Покупка землі | manual | 1d | 2023-03-15 | 2023-03-16 | 7 |  |  |  | Юрист; Бухгалтер | 16h | 652,240 |
| 9 | 1.3 | **Проектування** |  | 20.12d | 2023-03-16 | 2023-04-14 |  | 0d |  |  |  | 300h | 160,000 |
| 10 | 1.3.1 | Створення архітектурного проекту | manual | 10d | 2023-03-16 | 2023-03-30 | 8 |  |  |  | Інженер; Інженер2 | 160h | 84,000 |
| 11 | 1.3.2 | Затвердження проекту | milestone, manual | 0d | 2023-03-30 | 2023-03-30 | 10 |  |  |  | Електрик; Інженер; Сантехнік; Юрист |  |  |
| 12 | 1.3.3 | Підготовка документів для підключення Електроенергії | manual | 5d | 2023-03-30 | 2023-04-06 | 11 |  |  |  | Юрист [50%]; Інженер2 | 60h | 19,000 |
| 13 | 1.3.4 | Підготовка документів для підключення водоканал |  | 5d | 2023-03-30 | 2023-04-13 | 11 | 24.25d | 0.25d |  | Інженер; Юрист | 80h | 27,000 |
| 14 | 1.3.5 | Затвердження документів на підключення інфраструктурних систем | milestone, manual | 0d | 2023-04-14 | 2023-04-14 | 13, 12 |  |  |  | Інженер; Юрист |  | 30,000 |
| 15 | 1.4 | **Планування** |  | 15d | 2023-04-14 | 2023-05-05 |  | 15d |  |  |  | 240h | 39,400 |
| 16 | 1.4.1 | Визначення потреб в матеріалах та обладненні |  | 5d | 2023-04-14 | 2023-04-20 | 14 | 24d | 0d |  | Інженер2 | 40h | 6,000 |
| 17 | 1.4.2 | Визначення потреб в підрядниках |  | 5d | 2023-04-14 | 2023-04-20 | 14 | 24d | 0d |  | Інженер | 40h | 6,000 |
| 18 | 1.4.3 | Розробка плану закупівель та проведення тендерів для вибору підрядників |  | 10d | 2023-04-18 | 2023-05-01 | 16FS-3d, 17FS-3d | 24d | 3d |  | Юрист; Бухгалтер | 160h | 27,400 |
| 19 | 1.4.4 | Підписання тендерів | milestone, manual | 0d | 2023-05-05 | 2023-05-05 | 18 |  |  |  | Бухгалтер |  |  |
| 20 | 1.5 | **Підготовчі роботи** |  | 5d | 2023-05-05 | 2023-05-11 |  | 0d |  |  |  | 460h | 162,000 |
| 21 | 1.5.1 | Вирівнювання земельної ділянки, екскаваторні роботи | manual | 5d | 2023-05-05 | 2023-05-11 | 19 |  |  |  | Дизайнер; Робітник2; Робітник3; Робітник4; Робітник5 [50%]; Робітник6 [50%]; Робітник7 [50%] | 220h | 75,000 |
| 22 | 1.5.2 | Встановлення тимчасових біотуалетів та наметів для робітників | manual | 2d | 2023-05-09 | 2023-05-11 | 21FS-1d |  |  |  | Робітник5 [50%]; Робітник6 [50%]; Робітник7 [50%]; робітник8 | 40h | 28,600 |
| 23 | 1.5.3 | Проведення каналізації та водогону | manual | 5d | 2023-05-05 | 2023-05-11 | 21FF |  |  |  | Сантехнік; робітник10; робітник11; робітник12; Робітник13 | 200h | 58,400 |
| 24 | 1.6 | **Будівництво** |  | 26.88d | 2023-05-10 | 2023-06-15 |  | 0d |  |  | Арматура [1 шт.]; Бітумна черепиця [1 м2]; Вікна ПВХ [1 шт.]; Двері деревяні [80 шт.]; Двері металеві [20 шт.]; Керамічна цегла [5000 шт.]; Пінопласт [1600 м2]; Фундаментні блоки [6000 шт.]; Цемент [3000 мішок] | 1320h | 24,310,900 |
| 25 | 1.6.1 | Бетонування сваїв | manual | 5d | 2023-05-10 | 2023-05-16 | 23FS-2d |  |  |  | Інженер; Зварщик; Дизайнер; Робітник14; робітник15 | 200h |  |
| 26 | 1.6.2 | Виготовлення готових панелей | manual | 10d | 2023-05-11 | 2023-05-25 | 25SS |  |  |  |  |  | 15,000,000 |
| 27 | 1.6.3 | монтування підлоги на сваї | manual | 5d | 2023-05-24 | 2023-05-31 | 25FS+4d |  |  |  | Інженер; Зварщик; робітник11; робітник12; Робітник13; Робітник14; робітник15 | 280h | 1,528,800 |
| 28 | 1.6.4 | Транспортування панелей | manual | 1d | 2023-05-25 | 2023-05-26 | 26 |  |  |  | Робітник2; Робітник3; Робітник4; Робітник5 | 32h | 202,880 |
| 29 | 1.6.5 | Зібрка каркасних будинків | manual | 10d | 2023-05-26 | 2023-06-09 | 28, 27SS |  |  |  | Дизайнер; Робітник4; Робітник5; Робітник6; Робітник7; Інженер2 | 480h | 2,558,400 |
| 30 | 1.6.6 | Проведення телекомунікацій в будинки | manual | 5d | 2023-06-06 | 2023-06-13 | 29FS-3d |  |  |  | Електрик; робітник11; робітник12; Робітник13; Робітник14; робітник15; робітник10 | 280h | 426,400 |
| 31 | 1.6.7 | Асфальтування доріжок | manual | 2d | 2023-06-09 | 2023-06-13 | 29 |  |  |  | Робітник2; Робітник3; Робітник4 | 48h | 254,320 |
| 32 | 1.6.8 | Встановлення склопакетів | manual | 4d | 2023-06-09 | 2023-06-15 | 29 |  |  |  |  |  |  |
| 33 | 1.6.9 | Завершення чорнових робіт | milestone, manual | 0d | 2023-06-15 | 2023-06-15 | 30, 31, 32 |  |  |  |  |  |  |

| ID | WBS | Task | Type | Duration | Start | Finish | Predecessors | Total slack | Deadline | Resources | Work | Cost |
| --- | --- | --- | --- | --- | --- | --- | --- | --- | --- | --- | --- | --- |
| 34 | 1.7 | **Оздоблювальні роботи** |  | 5d | 2023-06-15 | 2023-06-22 |  | 0d |  |  | 379h | 4,538,820 |
| 35 | 1.7.1 | Встановлення меблів та електричних пристроїв | manual | 2d | 2023-06-15 | 2023-06-19 | 33 |  |  | Робітник2; Робітник3; Робітник4; Робітник5; Робітник6 | 80h | 4,007,200 |
| 36 | 1.7.2 | Підключення сантехніки | manual | 2d | 2023-06-15 | 2023-06-19 | 33 |  |  | Робітник7; робітник8; робітник10; Сантехнік | 64h | 305,920 |
| 37 | 1.7.3 | Озеленення території | manual | 5d | 2023-06-15 | 2023-06-22 | 33 |  |  | Дизайнер; робітник11; робітник12; Робітник13; Робітник14; робітник15 | 235h | 225,700 |
| 38 | 1.8 | **Введення в експлатацію** |  | 1.12d | 2023-06-22 | 2023-06-24 |  | 0d |  |  | 24h | 17,960 |
| 39 | 1.8.1 | Контроль якості виконаних робіт | manual | 2d | 2023-06-22 | 2023-06-24 | 37 |  |  | Електрик [50%]; Сантехнік [50%]; Інженер2 [50%] | 24h | 17,960 |
| 40 | 1.9 | Закінчення проекту | milestone, manual | 0d | 2023-06-28 | 2023-06-28 | 39 |  | 2023-07-01 |  |  |  |
